# OpenVehiculeLocator

Schedule from Planner, 2023-01-16 to 2023-05-25.

## Calendars

- OVL: Mon 14:00-18:00; Tue 13:00-18:00; Wed 09:00-13:00; Thu 13:00-17:00; Fri off; Sat-Sun as the base calendar. Exceptions (off unless hours are given): 2023-01-19, 2023-02-13 to 2023-02-16, 2023-02-20 to 2023-02-23, 2023-03-13 14:00-18:00, 2023-03-14 13:00-18:00, 2023-03-15 09:00-13:00, 2023-03-16 13:00-17:00, 2023-03-17, 2023-03-20 14:00-18:00, 2023-03-21 13:00-18:00, 2023-03-22 09:00-13:00, 2023-03-23 13:00-17:00, 2023-04-17 to 2023-04-20, 2023-04-24 to 2023-04-27, 2023-05-01.

## Resources

| Resource |
| --- |
| Théo Maréchal |
| Zoubir Bennane |
| Sylvain Brunet |
| Ezio Cangialosi |

## Schedule

| ID | WBS | Task | Type | Duration | Start | Finish | Predecessors | Complete | Constraint | Resources | Work |
| --- | --- | --- | --- | --- | --- | --- | --- | --- | --- | --- | --- |
| 1 | 1 | **Etudes Préalables** |  |  | 2023-01-16 | 2023-01-31 |  |  |  |  | 88h |
| 2 | 1.1 | Réunion de début de projet |  |  | 2023-01-16 | 2023-01-16 |  | 65% |  | Théo Maréchal [25%]; Zoubir Bennane [25%]; Sylvain Brunet [25%]; Ezio Cangialosi [25%] | 4h |
| 3 | 1.2 | Formalisation des échanges |  |  | 2023-01-17 | 2023-01-24 | 2 | 100% |  | Théo Maréchal [25%]; Zoubir Bennane [25%]; Sylvain Brunet [25%]; Ezio Cangialosi [25%] | 17h |
| 4 | 1.3 | Définition des protocoles utilisés |  |  | 2023-01-17 | 2023-01-24 | 2 | 100% |  | Théo Maréchal [25%]; Zoubir Bennane [25%]; Sylvain Brunet [25%]; Ezio Cangialosi [25%] | 17h |
| 5 | 1.4 | Définition de l'électronique utilisés |  |  | 2023-01-17 | 2023-01-24 | 2 | 100% |  | Théo Maréchal [25%]; Zoubir Bennane [25%]; Sylvain Brunet [25%]; Ezio Cangialosi [25%] | 17h |
| 6 | 1.5 | Définition du design des IHM |  |  | 2023-01-17 | 2023-01-24 | 2 | 100% |  | Théo Maréchal [25%]; Zoubir Bennane [25%]; Sylvain Brunet [25%]; Ezio Cangialosi [25%] | 17h |
| 7 | 1.6 | Réalisation des diagrammes UML |  |  | 2023-01-24 | 2023-01-30 | 5, 4, 3 | 100% |  | Théo Maréchal [25%]; Zoubir Bennane [25%]; Sylvain Brunet [25%]; Ezio Cangialosi [25%] | 12h |
| 8 | 1.7 | Revue de Projet 1 | milestone | 0d | 2023-01-26 | 2023-01-26 |  |  | must start on 2023-01-26 |  |  |
| 9 | 1.8 | Réalisation de la documentation interne |  |  | 2023-01-30 | 2023-01-31 | 7 | 100% |  | Théo Maréchal [25%]; Zoubir Bennane [25%]; Sylvain Brunet [25%]; Ezio Cangialosi [25%] | 4h |
| 10 | 2 | **Réalisation de Proofs of Concepts** |  |  | 2023-01-31 | 2023-03-13 | 9 |  |  |  | 179h |
| 11 | 2.1 | Développement du traqueur (hors GPRS) |  |  | 2023-01-31 | 2023-02-07 |  | 100% |  | Ezio Cangialosi | 16h |
| 12 | 2.2 | Développement du traqueur, biliothèque GPRS |  |  | 2023-02-07 | 2023-02-27 | 11 | 100% |  | Ezio Cangialosi | 12h |
| 13 | 2.3 | Fusion du développement traqueur | milestone | 0d | 2023-02-27 | 2023-02-27 |  |  | must start on 2023-02-27 |  |  |
| 14 | 2.4 | Assemblage de la bibliothèque GPRS avec le reste du programme |  |  | 2023-02-27 | 2023-02-28 | 11FS+1h, 12FS+1h | 100% |  | Ezio Cangialosi | 4h |
| 15 | 2.5 | Configuration de la BDD |  |  | 2023-01-31 | 2023-02-01 |  | 100% |  | Théo Maréchal | 4h |
| 16 | 2.6 | Développement de l'API |  |  | 2023-01-31 | 2023-02-28 |  | 100% |  | Théo Maréchal | 33h |
| 17 | 2.7 | Développement de l'application mobile |  |  | 2023-01-31 | 2023-02-28 |  | 100% |  | Sylvain Brunet | 33h |
| 18 | 2.8 | Développement de l'application web |  |  | 2023-01-31 | 2023-02-28 |  | 100% |  | Zoubir Bennane | 33h |
| 19 | 2.9 | Revue de Projet 2 | milestone | 0d | 2023-03-13 | 2023-03-13 |  |  | must start on 2023-03-13 |  |  |
| 20 | 2.10 | Tests de l'API et des IHM |  |  | 2023-02-28 | 2023-03-13 | 18, 17, 16 | 100% |  | Théo Maréchal [33%]; Zoubir Bennane [33%]; Sylvain Brunet [33%] | 29h |
| 21 | 2.11 | Tests du serveur de gestion et du traqueur |  |  | 2023-02-28 | 2023-03-13 | 14 | 100% |  | Théo Maréchal [25%]; Ezio Cangialosi [25%] | 15h |
| 22 | 3 | **Prototypage** |  |  | 2023-03-14 | 2023-05-11 | 21FS+24h, 20FS+24h |  |  |  | 448h |
| 23 | 3.1 | Amélioration du traqueur, correction des bugs majeurs, gestion des erreurs tierces |  |  | 2023-03-14 | 2023-05-02 |  | 100% |  | Ezio Cangialosi | 80h |
| 24 | 3.2 | Amélioration du serveur de gestion, correction des bugs majeurs, gestion des erreurs tierces |  |  | 2023-03-14 | 2023-05-02 |  | 100% |  | Théo Maréchal | 80h |
| 25 | 3.3 | Amérlioration de l'API, correction des bugs majeurs, gestion des erreurs utilisateur |  |  | 2023-03-14 | 2023-05-02 |  | 100% |  | Théo Maréchal | 80h |
| 26 | 3.4 | Amérlioration de l'App Web, correction des bugs majeurs, gestion des erreurs utilisateur et/ou tierces |  |  | 2023-03-14 | 2023-05-02 |  | 100% |  | Zoubir Bennane | 80h |
| 27 | 3.5 | Amérlioration de l'App mobile, correction des bugs majeurs, gestion des erreurs utilisateur et/ou tierces |  |  | 2023-03-14 | 2023-05-02 |  | 100% |  | Sylvain Brunet | 80h |
| 28 | 3.6 | Réalisation de la documentation utilisateur |  |  | 2023-04-10 | 2023-05-02 |  | 100% | must start on 2023-04-10 | Théo Maréchal [25%]; Zoubir Bennane [25%]; Sylvain Brunet [25%]; Ezio Cangialosi [25%] | 20h |
| 29 | 3.7 | Tests d'intégration complets |  |  | 2023-05-02 | 2023-05-04 | 27, 26, 25, 24, 23 | 100% |  | Théo Maréchal [25%]; Zoubir Bennane [25%]; Sylvain Brunet [25%]; Ezio Cangialosi [25%] | 11h |
| 30 | 3.8 | Revue de Projet 3 | milestone | 0d | 2023-05-09 | 2023-05-09 |  |  | must start on 2023-05-09 |  |  |
| 31 | 3.9 | Production d'une version alpha |  |  | 2023-05-08 | 2023-05-11 | 29 |  |  | Théo Maréchal [25%]; Zoubir Bennane [25%]; Sylvain Brunet [25%]; Ezio Cangialosi [25%] | 17h |

| ID | WBS | Task | Type | Duration | Start | Finish | Predecessors | Constraint | Resources | Work |
| --- | --- | --- | --- | --- | --- | --- | --- | --- | --- | --- |
| 32 | 4 | **Fiabilisation (Facultatif en fonction de l'avancement)** |  |  | 2023-05-15 | 2023-05-25 | 31FS+9h |  |  | 43h |
| 33 | 4.1 | Tests du système complet en conditions réelles et dégradées |  |  | 2023-05-15 | 2023-05-17 |  |  | Théo Maréchal [25%]; Zoubir Bennane [25%]; Sylvain Brunet [25%]; Ezio Cangialosi [25%] | 13h |
| 34 | 4.2 | Débuggage des bugs notables |  |  | 2023-05-15 | 2023-05-17 |  |  | Théo Maréchal [25%]; Zoubir Bennane [25%]; Sylvain Brunet [25%]; Ezio Cangialosi [25%] | 13h |
| 35 | 4.3 | Amélioration et correction de la documentation utilisateur |  |  | 2023-05-22 | 2023-05-23 | 34FS+8h, 33FS+8h |  | Théo Maréchal [25%]; Zoubir Bennane [25%]; Sylvain Brunet [25%]; Ezio Cangialosi [25%] | 9h |
| 36 | 4.4 | Production d'une version beta |  |  | 2023-05-24 | 2023-05-25 | 35FS+4h |  | Théo Maréchal [25%]; Zoubir Bennane [25%]; Sylvain Brunet [25%]; Ezio Cangialosi [25%] | 8h |
| 37 | 5 | Fin de projet | milestone | 0d | 2023-05-22 | 2023-05-19 |  | must start on 2023-05-19 |  |  |
